# Riverside Office Building

Schedule from Primavera P6, 2026-01-05 to 2027-03-02, data date 2026-04-06, A marks actual dates.

## Calendars

- 5 Day Workweek: Mon-Fri 08:00-12:00, 13:00-17:00; Sat-Sun off. Exceptions (off unless hours are given): 2026-01-19, 2026-02-16, 2026-05-25, 2026-06-19, 2026-07-03, 2026-09-07, 2026-10-12, 2026-11-11, 2026-11-26, 2026-12-25, 2027-01-01, 2027-01-18, 2027-02-15.
- 5 Day - 10h (Concrete): Mon-Fri 07:00-12:00, 13:00-18:00; Sat-Sun off. Exceptions (off unless hours are given): 2026-01-19, 2026-02-16, 2026-05-25, 2026-06-19, 2026-07-03, 2026-09-07, 2026-10-12, 2026-11-11, 2026-11-26, 2026-12-25, 2027-01-01, 2027-01-18, 2027-02-15.

## Resources

| Resource | Group |
| --- | --- |
| Architect | labor |
| Design Engineer | labor |
| Project Manager | labor |
| Site Foreman | labor |
| Excavator & Crane | equipment |
| Electrician | labor |
| Concrete Crew | labor |
| Carpenter | labor |
| Ready-Mix Concrete (m³) | material |
| Glazier | labor |
| Plumber / Pipefitter | labor |
| Painter | labor |

## Schedule

| ID | WBS | Activity | Type | Duration | Start | Finish | Predecessors | Complete | Remaining | Total float | Calendar | Resources | Cost | Actual cost | Discipline |
| --- | --- | --- | --- | --- | --- | --- | --- | --- | --- | --- | --- | --- | --- | --- | --- |
|  | RIV.1 | **Pre-Construction** |  |  | 2026-01-05 | 2027-03-02 |  |  |  |  |  |  |  |  |  |
| LOE100 |  | Project Management | level of effort | 289d | 2026-01-05 A | 2027-03-02 | M0010 SS, M0090 FF | 22% | 225d | 0d |  | Project Manager [1400 h] | 119,000 | 53,550 | MANA |
| M0010 |  | Notice to Proceed | milestone | 0d | 2026-01-05 A | 2026-01-05 A |  | 100% |  |  |  |  |  |  |  |
|  | RIV.1.1 | **Design & Engineering** |  |  | 2026-01-05 | 2026-03-10 |  |  |  |  |  |  |  |  |  |
| DE1000 |  | Concept Design |  | 15d | 2026-01-05 A | 2026-01-26 A | M0010 | 100% |  |  |  | Architect [120 h] | 11,400 | 11,400 | DESI |
| DE1010 |  | Structural Design |  | 20d | 2026-01-27 A | 2026-02-24 A | DE1000 | 100% |  |  |  | Design Engineer [160 h] | 12,800 | 12,800 | DESI |
| DE1020 |  | MEP Design |  | 20d | 2026-01-27 A | 2026-02-24 A | DE1000 | 100% |  |  |  | Design Engineer [160 h] | 12,800 | 12,800 | DESI |
| DE1030 |  | Facade Design |  | 15d | 2026-01-27 A | 2026-02-17 A | DE1000 | 100% |  |  |  | Architect [120 h] | 11,400 | 11,400 | DESI |
| DE1040 |  | Design Coordination & Clash Detection |  | 10d | 2026-02-25 A | 2026-03-10 A | DE1010, DE1020, DE1030 | 100% |  |  |  | Design Engineer [80 h] | 6,400 | 6,400 | DESI |
|  | RIV.1.2 | **Permits & Procurement** |  |  | 2026-01-27 | 2026-04-21 |  |  |  |  |  |  |  |  |  |
| PR1000 |  | Building Permit Application |  | 30d | 2026-01-27 A | 2026-03-10 A | DE1000 | 100% |  |  |  | Project Manager [60 h] | 5,100 | 5,100 | MANA |
| PR1020 |  | Procure Curtain Wall System |  | 45d | 2026-02-18 A | 2026-04-21 | DE1030 | 73% | 12d | 90d |  | Project Manager [40 h] | 3,400 | 1,530 | PROC |
| PR1010 |  | Procure Rebar & Structural Steel |  | 25d | 2026-02-25 A | 2026-03-31 A | DE1010 | 100% |  |  |  | Project Manager [40 h] | 3,400 | 3,400 | PROC |
| PR1030 |  | Procure MEP Equipment |  | 40d | 2026-02-25 A | 2026-04-21 | DE1020 | 70% | 12d | 102d |  | Project Manager [40 h] | 3,400 | 1,530 | PROC |
| M0020 |  | Permit Approved | milestone | 0d | 2026-03-11 A | 2026-03-11 A | PR1000 | 100% |  |  |  |  |  |  |  |
|  | RIV.2 | **Site Works** |  |  | 2026-01-05 | 2027-03-02 |  |  |  |  |  |  |  |  |  |
| LOE110 |  | Site Supervision | level of effort | 289d | 2026-01-05 A | 2027-03-02 | SW1000 SS, CM1030 FF | 22% | 225d | 0d |  | Site Foreman [2200 h] | 132,000 | 59,400 | MANA |
| SW1000 |  | Site Mobilization |  | 5d | 2026-03-11 A | 2026-03-17 A | M0020 | 100% |  |  |  | Site Foreman [40 h] | 2,400 | 2,400 | CIVI |
| SW1010 |  | Clearing & Grubbing |  | 8d | 2026-03-18 A | 2026-03-27 A | SW1000 | 100% |  |  |  | Excavator & Crane [64 h]; Site Foreman [16 h] | 8,640 | 8,640 | CIVI |
| SW1020 |  | Bulk Excavation |  | 15d | 2026-03-30 A | 2026-04-17 | SW1010 | 33% | 10d | 1d |  | Excavator & Crane [120 h] | 14,400 | 6,480 | CIVI |
| SW1030 |  | Temporary Shoring |  | 10d | 2026-04-06 | 2026-04-17 | SW1020 SS+5d |  |  | 1d |  | Site Foreman [80 h] | 4,800 |  | CIVI |
| SW1040 |  | Site Utilities - Underground |  | 12d | 2026-04-20 | 2026-05-05 | SW1020 |  |  | 204d |  | Electrician [96 h] | 5,952 |  | CIVI |
|  | RIV.3 | **Structure** |  |  | 2026-04-20 | 2026-09-24 |  |  |  |  |  |  |  |  |  |
|  | RIV.3.1 | **Foundations** |  |  | 2026-04-20 | 2026-06-23 |  |  |  |  |  |  |  |  |  |
| FD1000 |  | Blinding & Waterproofing |  | 6d | 2026-04-20 | 2026-04-27 | SW1020, SW1030 |  |  | 1d | 5 Day - 10h (Concrete) | Concrete Crew [48 h] | 2,304 |  | STRU |
| FD1010 |  | Footing Rebar |  | 12d | 2026-04-28 | 2026-05-13 | FD1000, PR1010 |  |  | 1d | 5 Day - 10h (Concrete) | Concrete Crew [96 h] | 4,608 |  | STRU |
| FD1020 |  | Footing Formwork |  | 8d | 2026-04-28 | 2026-05-07 | FD1000 |  |  | 5d | 5 Day - 10h (Concrete) | Carpenter [64 h] | 3,200 |  | STRU |
| FD1030 |  | Pour Footings |  | 5d | 2026-05-14 | 2026-05-20 | FD1010, FD1020 |  |  | 1d | 5 Day - 10h (Concrete) | Concrete Crew [40 h]; Ready-Mix Concrete (m³) [180] | 28,020 |  | STRU |
| FD1040 |  | Basement Walls |  | 15d | 2026-05-21 | 2026-06-11 | FD1030 |  |  | 1d | 5 Day - 10h (Concrete) | Concrete Crew [120 h]; Ready-Mix Concrete (m³) [220] | 37,660 |  | STRU |
| FD1050 |  | Concrete Curing (Foundations) |  | 7d | 2026-06-12 | 2026-06-23 | FD1040 |  |  | 1d | 5 Day - 10h (Concrete) |  |  |  | STRU |

| ID | WBS | Activity | Type | Duration | Start | Finish | Predecessors | Total float | Calendar | Resources | Cost | Discipline |
| --- | --- | --- | --- | --- | --- | --- | --- | --- | --- | --- | --- | --- |
|  | RIV.3.2 | **Superstructure** |  |  | 2026-06-24 | 2026-09-24 |  |  |  |  |  |  |
| SS1000 |  | Ground Floor Slab |  | 10d | 2026-06-24 | 2026-07-08 | FD1050 | 1d | 5 Day - 10h (Concrete) | Concrete Crew [80 h]; Ready-Mix Concrete (m³) [260] | 41,540 | STRU |
| SS1010 |  | Level 1 Columns & Slab |  | 14d | 2026-07-09 | 2026-07-28 | SS1000 | 1d | 5 Day - 10h (Concrete) | Concrete Crew [112 h]; Ready-Mix Concrete (m³) [240] | 40,176 | STRU |
| SS1050 |  | Stair & Lift Cores |  | 20d | 2026-07-16 | 2026-08-12 | SS1010 SS+5d | 136d | 5 Day - 10h (Concrete) | Concrete Crew [160 h] | 7,680 | STRU |
| SS1020 |  | Level 2 Columns & Slab |  | 14d | 2026-07-29 | 2026-08-17 | SS1010 | 1d | 5 Day - 10h (Concrete) | Concrete Crew [112 h]; Ready-Mix Concrete (m³) [240] | 40,176 | STRU |
| SS1030 |  | Level 3 Columns & Slab |  | 14d | 2026-08-18 | 2026-09-04 | SS1020 | 1d | 5 Day - 10h (Concrete) | Concrete Crew [112 h]; Ready-Mix Concrete (m³) [240] | 40,176 | STRU |
| SS1040 |  | Roof Slab |  | 12d | 2026-09-08 | 2026-09-23 | SS1030 | 1d | 5 Day - 10h (Concrete) | Concrete Crew [96 h]; Ready-Mix Concrete (m³) [200] | 33,608 | STRU |
| M0030 |  | Structure Topped Out | milestone | 0d | 2026-09-24 | 2026-09-24 | SS1040, SS1050 | 106d | 5 Day - 10h (Concrete) |  |  |  |
|  | RIV.4 | **Building Envelope** |  |  | 2026-08-18 | 2026-10-21 |  |  |  |  |  |  |
| EN1010 |  | Curtain Wall Install - Level 1-2 |  | 18d | 2026-08-18 | 2026-09-11 | SS1020, PR1020 | 9d |  | Glazier [144 h] | 8,352 | ENVE |
| EN1030 |  | External Cladding |  | 20d | 2026-08-28 | 2026-09-25 | EN1010 SS+8d | 17d |  | Glazier [160 h] | 9,280 | ENVE |
| EN1000 |  | Roof Waterproofing |  | 10d | 2026-09-24 | 2026-10-07 | SS1040 | 9d |  | Site Foreman [80 h] | 4,800 | ENVE |
| EN1020 |  | Curtain Wall Install - Level 3-Roof |  | 18d | 2026-09-24 | 2026-10-20 | EN1010, SS1040 | 1d |  | Glazier [144 h] | 8,352 | ENVE |
| EN1040 |  | Building Weathertight | milestone | 0d | 2026-10-21 | 2026-10-21 | EN1020, EN1030, EN1000 | 0d |  |  |  |  |
|  | RIV.5 | **MEP Installation** |  |  | 2026-07-29 | 2026-11-25 |  |  |  |  |  |  |
| ME1000 |  | MEP Rough-In - Level 1 |  | 15d | 2026-07-29 | 2026-08-18 | SS1010, PR1030 | 35d |  | Electrician [120 h]; Plumber / Pipefitter [120 h] | 14,640 | MEP |
| ME1010 |  | MEP Rough-In - Level 2 |  | 15d | 2026-08-18 | 2026-09-08 | ME1000 SS+8d, SS1020 | 29d |  | Electrician [120 h]; Plumber / Pipefitter [120 h] | 14,640 | MEP |
| ME1040 |  | Main Switchgear & Distribution |  | 12d | 2026-08-19 | 2026-09-03 | ME1000 | 90d |  | Electrician [96 h] | 5,952 | MEP |
| ME1020 |  | MEP Rough-In - Level 3 |  | 15d | 2026-09-08 | 2026-09-28 | ME1010 SS+8d, SS1030 | 23d |  | Electrician [120 h]; Plumber / Pipefitter [120 h] | 14,640 | MEP |
| ME1030 |  | Install HVAC Plant on Roof |  | 10d | 2026-09-24 | 2026-10-07 | SS1040, PR1030 | 67d |  | Excavator & Crane [40 h]; Plumber / Pipefitter [80 h] | 9,600 | MEP |
| ME1050 |  | Fire Protection & Sprinklers |  | 18d | 2026-09-29 | 2026-10-23 | ME1020 | 23d |  | Plumber / Pipefitter [144 h] | 8,640 | MEP |
| ME1060 |  | MEP Second Fix |  | 25d | 2026-10-21 | 2026-11-25 | ME1020, EN1040 | 34d |  | Electrician [200 h]; Plumber / Pipefitter [200 h] | 24,400 | MEP |
|  | RIV.6 | **Interior Fit-Out** |  |  | 2026-10-21 | 2027-01-14 |  |  |  |  |  |  |
| IN1000 |  | Partition Framing - Level 1-3 |  | 20d | 2026-10-21 | 2026-11-18 | EN1040, ME1020 SS+5d | 1d |  | Carpenter [160 h] | 8,000 | INTE |
| IN1010 |  | Drywall & Taping |  | 20d | 2026-11-19 | 2026-12-17 | IN1000, ME1050 FS-5d | 1d |  | Carpenter [160 h] | 8,000 | INTE |
| IN1020 |  | Ceiling Grid & Tiles |  | 15d | 2026-12-18 | 2027-01-11 | IN1010, ME1060 SS+10d | 4d |  | Carpenter [120 h] | 6,000 | INTE |
| IN1030 |  | Flooring |  | 15d | 2026-12-18 | 2027-01-11 | IN1010 | 4d |  | Carpenter [120 h] | 6,000 | INTE |
| IN1040 |  | Painting & Decoration |  | 18d | 2026-12-18 | 2027-01-14 | IN1010 | 1d |  | Painter [144 h] | 6,336 | INTE |
| IN1050 |  | Doors, Joinery & Ironmongery |  | 12d | 2026-12-29 | 2027-01-14 | IN1040 SS+6d | 1d |  | Carpenter [96 h] | 4,800 | INTE |

| ID | WBS | Activity | Type | Duration | Start | Finish | Predecessors | Total float | Resources | Cost | Discipline |
| --- | --- | --- | --- | --- | --- | --- | --- | --- | --- | --- | --- |
|  | RIV.7 | **Commissioning & Handover** |  |  | 2026-11-27 | 2027-03-02 |  |  |  |  |  |
| CM1010 |  | Electrical Testing & Energization |  | 10d | 2026-11-27 | 2026-12-10 | ME1040, ME1060 | 34d | Electrician [80 h] | 4,960 | COMM |
| CM1020 |  | Fire Alarm Acceptance Test |  | 5d | 2026-12-11 | 2026-12-17 | CM1010, ME1050 | 34d | Design Engineer [40 h] | 3,200 | COMM |
| CM1000 |  | HVAC Commissioning |  | 15d | 2027-01-12 | 2027-02-02 | ME1060, ME1030, IN1020 | 4d | Design Engineer [120 h] | 9,600 | COMM |
| CM1030 |  | Snagging & Defect Rectification |  | 15d | 2027-01-15 | 2027-02-05 | IN1030, IN1050, IN1020 | 1d | Site Foreman [120 h] | 7,200 | COMM |
| CM1040 |  | Client Inspection & Sign-Off |  | 5d | 2027-02-08 | 2027-02-12 | CM1000, CM1020, CM1030 | 1d | Project Manager [40 h] | 3,400 | MANA |
| CM1050 |  | Occupancy Certificate |  | 10d | 2027-02-16 | 2027-03-01 | CM1040 | 1d | Project Manager [40 h] | 3,400 | MANA |
| M0090 |  | Practical Completion | milestone | 0d | 2027-03-02 | 2027-03-02 | CM1050 | 0d |  |  |  |

## Activity codes

| Code | Value | Meaning |
| --- | --- | --- |
| Discipline | CIVI | Civil |
| Discipline | COMM | Commissioning |
| Discipline | DESI | Design |
| Discipline | ENVE | Envelope |
| Discipline | INTE | Interiors |
| Discipline | MANA | Management |
| Discipline | PROC | Procurement |
| Discipline | STRU | Structure |
